# microsoft-project-how-to-create-your-project-plan-in-ms-project

Schedule from MS Project, 2016-10-06 to 2016-11-08, costs in ₫.

## Calendars

- Standard: Mon-Fri 08:00-12:00, 13:00-17:00; Sat-Sun off. Exceptions (off unless hours are given): 2016-10-13 (Columbus Day).

## Resources

| Resource | Group | Rate |
| --- | --- | --- |
| John | Analysis | 60 |
| Nelly | Analysis | 50 |
| David | Architect | 75 |
| Joe | Developers | 70 |
| Nick | Developers | 60 |
| Justin | Developers | 60 |
| Lisa | Developers | 40 |
| Richard | Testing | 50 |

## Schedule

| ID | WBS | Task | Type | Duration | Start | Finish | Predecessors | Total slack | Free slack | Resources | Work | Cost |
| --- | --- | --- | --- | --- | --- | --- | --- | --- | --- | --- | --- | --- |
| 1 | 1 | **Website Development** |  | 23d? | 2016-10-06 | 2016-11-08 |  | 0d |  |  | 440h | 11,920 |
| 2 | 1.1 | **ANALYSIS** |  | 23d? | 2016-10-06 | 2016-11-08 |  | 0d |  |  | 196h | 10,120 |
| 3 | 1.1.1 | Main Page |  | 5d | 2016-10-06 | 2016-10-12 |  | 13d | 0d | John [50%] | 20h | 1,320 |
| 4 | 1.1.2 | Content Page #1 |  | 3d? | 2016-10-06 | 2016-10-10 |  | 0d |  | Nelly | 24h | 1,200 |
| 5 | 1.1.3 | Content Page #2 |  | 2d? | 2016-10-11 | 2016-10-12 | 4 | 0d |  | Nelly | 16h | 800 |
| 6 | 1.1.4 | Content Page #3 | milestone | 0d? | 2016-10-12 | 2016-10-12 | 3 | 13d | 0d | John |  |  |
| 7 | 1.1.5 | Author Page |  | 2d? | 2016-10-14 | 2016-10-17 | 5 | 0d |  | Nelly | 16h | 800 |
| 8 | 1.1.6 | Contact Page | milestone | 0d? | 2016-10-12 | 2016-10-12 | 6 | 13d | 0d | John |  |  |
| 9 | 1.1.7 | Search Page |  | 7d? | 2016-10-18 | 2016-10-27 | 7 | 0d |  | Nelly | 56h | 2,800 |
| 10 | 1.1.8 | Order Page | milestone | 0d? | 2016-10-12 | 2016-10-12 | 8 | 18d | 0d | John |  |  |
| 11 | 1.1.9 | Tracking Page | milestone | 0d? | 2016-10-12 | 2016-10-12 | 10 | 18d | 10d | John |  |  |
| 12 | 1.1.10 | Admin Page |  | 8d? | 2016-10-28 | 2016-11-08 | 9 | 0d |  | Nelly | 64h | 3,200 |
| 13 | 1.2 | **DESIGN** |  | 16d? | 2016-10-18 | 2016-11-08 |  | 0d |  |  | 24h | 1,800 |
| 14 | 1.2.1 | Main Page | milestone | 0d | 2016-10-20 | 2016-10-20 | 3, 15 | 13d | 0d | David |  |  |
| 15 | 1.2.2 | Content Page #1 |  | 2d | 2016-10-19 | 2016-10-20 | 4, 18 | 10d | 0d | David | 16h | 1,200 |
| 16 | 1.2.3 | Content Page #2 | milestone | 0d? | 2016-10-20 | 2016-10-20 | 5, 14 | 13d | 0d | David |  |  |
| 17 | 1.2.4 | Content Page #3 | milestone | 0d? | 2016-10-20 | 2016-10-20 | 6, 14, 16 | 13d | 0d | David |  |  |
| 18 | 1.2.5 | Author Page |  | 1d? | 2016-10-18 | 2016-10-18 | 7 | 18.5d | 0d | David | 8h | 600 |
| 19 | 1.2.6 | Contact Page | milestone | 0d? | 2016-10-19 | 2016-10-19 | 8 | 14d | 0d | David |  |  |
| 20 | 1.2.7 | Search Page | milestone | 0d | 2016-10-27 | 2016-10-27 | 9, 19 | 8d | 0d | David |  |  |
| 21 | 1.2.8 | Order Page | milestone | 0d | 2016-10-27 | 2016-10-27 | 10, 20 | 8d | 0d | David |  |  |
| 22 | 1.2.9 | Tracking Page | milestone | 0d | 2016-10-27 | 2016-10-27 | 11, 21 | 8d | 0d | David |  |  |
| 23 | 1.2.10 | Admin Page | milestone | 0d | 2016-11-08 | 2016-11-08 | 12, 22 | 0d |  | David |  |  |
| 24 | 1.3 | **DEVELOPMENT** |  | 15d? | 2016-10-19 | 2016-11-08 |  | 0d |  |  | 72h |  |
| 25 | 1.3.1 | Main Page | milestone | 0d | 2016-10-20 | 2016-10-20 | 14 | 13d | 0d |  |  |  |
| 26 | 1.3.2 | Content Page #1 |  | 1d | 2016-10-21 | 2016-10-21 | 15 | 24.5d | 0d |  | 48h |  |
| 27 | 1.3.3 | Content Page #2 | milestone | 0d? | 2016-10-20 | 2016-10-20 | 16 | 13d | 0d |  |  |  |
| 28 | 1.3.4 | Content Page #3 | milestone | 0d? | 2016-10-20 | 2016-10-20 | 17 | 13d | 0d |  |  |  |
| 29 | 1.3.5 | Author Page |  | 1d? | 2016-10-19 | 2016-10-19 | 18 | 26.5d | 0d |  | 24h |  |
| 30 | 1.3.6 | Contact Page | milestone | 0d? | 2016-10-19 | 2016-10-19 | 19 | 14d | 0d |  |  |  |
| 31 | 1.3.7 | Search Page | milestone | 0d | 2016-10-27 | 2016-10-27 | 20 | 8d | 0d |  |  |  |
| 32 | 1.3.8 | Order Page | milestone | 0d | 2016-10-27 | 2016-10-27 | 21 | 8d | 0d |  |  |  |
| 33 | 1.3.9 | Tracking Page | milestone | 0d | 2016-10-27 | 2016-10-27 | 22 | 8d | 0d |  |  |  |
| 34 | 1.3.10 | Admin Page | milestone | 0d | 2016-11-08 | 2016-11-08 | 23 | 0d |  |  |  |  |

| ID | WBS | Task | Type | Duration | Start | Finish | Predecessors | Total slack | Free slack | Work |
| --- | --- | --- | --- | --- | --- | --- | --- | --- | --- | --- |
| 35 | 1.4 | **TESTING** |  | 14d? | 2016-10-19 | 2016-11-08 |  | 0d |  | 20h |
| 36 | 1.4.1 | Main Page | milestone | 0d | 2016-10-20 | 2016-10-20 | 25 | 13d | 0d |  |
| 37 | 1.4.2 | Content Page #1 |  | 1d | 2016-10-24 | 2016-10-24 | 26 | 24.5d | 0d | 12h |
| 38 | 1.4.3 | Content Page #2 | milestone | 0d? | 2016-10-20 | 2016-10-20 | 27 | 13d | 0d |  |
| 39 | 1.4.4 | Content Page #3 | milestone | 0d? | 2016-10-20 | 2016-10-20 | 28 | 13d | 0d |  |
| 40 | 1.4.5 | Author Page |  | 1d? | 2016-10-20 | 2016-10-20 | 29 | 26.5d | 0d | 8h |
| 41 | 1.4.6 | Contact Page | milestone | 0d? | 2016-10-19 | 2016-10-19 | 30 | 14d | 0d |  |
| 42 | 1.4.7 | Search Page | milestone | 0d | 2016-10-27 | 2016-10-27 | 31 | 8d | 0d |  |
| 43 | 1.4.8 | Order Page | milestone | 0d | 2016-10-27 | 2016-10-27 | 32 | 8d | 0d |  |
| 44 | 1.4.9 | Tracking Page | milestone | 0d | 2016-10-27 | 2016-10-27 | 33 | 8d | 0d |  |
| 45 | 1.4.10 | Admin Page | milestone | 0d | 2016-11-08 | 2016-11-08 | 34 | 0d |  |  |
| 46 | 1.5 | **BUGFIX** |  | 15d? | 2016-10-19 | 2016-11-08 |  | 0d |  | 128h |
| 47 | 1.5.1 | Main Page |  | 1d? | 2016-10-20 | 2016-10-20 | 36FF | 13d |  | 16h |
| 48 | 1.5.2 | Content Page #1 |  | 1d? | 2016-10-24 | 2016-10-24 | 37FF | 24.5d |  | 8h |
| 49 | 1.5.3 | Content Page #2 |  | 1d? | 2016-10-20 | 2016-10-20 | 38FF | 13d |  | 8h |
| 50 | 1.5.4 | Content Page #3 |  | 1d? | 2016-10-20 | 2016-10-20 | 39FF | 13d |  | 8h |
| 51 | 1.5.5 | Author Page |  | 1d? | 2016-10-20 | 2016-10-20 | 40FF | 21.5d |  | 4h |
| 52 | 1.5.6 | Contact Page |  | 1d? | 2016-10-19 | 2016-10-19 | 41FF | 14d |  | 4h |
| 53 | 1.5.7 | Search Page |  | 1d? | 2016-10-27 | 2016-10-27 | 42FF | 8d |  | 24h |
| 54 | 1.5.8 | Order Page |  | 1d? | 2016-10-27 | 2016-10-27 | 43FF | 8d |  | 16h |
| 55 | 1.5.9 | Tracking Page |  | 1d? | 2016-10-27 | 2016-10-27 | 44FF | 8d |  | 8h |
| 56 | 1.5.10 | Admin Page |  | 1d? | 2016-11-08 | 2016-11-08 | 45FF | 0d |  | 32h |
| 57 | 1.6 | **MILESTONE** |  | 0d | 2016-11-08 | 2016-11-08 |  | 0d |  |  |
| 58 | 1.6.1 | Finish of Analysis Phase | milestone | 0d | 2016-11-08 | 2016-11-08 | 2 | 0d |  |  |
| 59 | 1.6.2 | Finish of Design Phase | milestone | 0d | 2016-11-08 | 2016-11-08 | 13 | 0d |  |  |
| 60 | 1.6.3 | Finish of Development Phase | milestone | 0d | 2016-11-08 | 2016-11-08 | 24 | 0d |  |  |
| 61 | 1.6.4 | Finish of Testing Phase | milestone | 0d | 2016-11-08 | 2016-11-08 | 35 | 0d |  |  |
| 62 | 1.6.5 | Finish of BugFix Phase | milestone | 0d | 2016-11-08 | 2016-11-08 | 46 | 0d |  |  |
